# 项目规划-田春雨

Schedule from MS Project, 2020-11-10 to 2020-12-15.

## Calendars

- 标准: Mon-Fri 08:00-12:00, 13:00-17:00; Sat-Sun off.

## Schedule

| ID | WBS | Task | Type | Duration | Start | Finish | Total slack |
| --- | --- | --- | --- | --- | --- | --- | --- |
| 1 | 1 | **启动** |  | 1d | 2020-11-27 | 2020-11-27 |  |
| 2 | 1.1 | 组件核心团队 | manual | 1d? | 2020-11-15 | 2020-11-15 |  |
| 3 | 1.2 | 干系人分析 | manual | 1d? | 2020-11-15 | 2020-11-15 |  |
| 4 | 1.3 | 里程碑计划 | manual | 1d? | 2020-11-15 | 2020-11-15 |  |
| 5 | 1.4 | 制定项目章程 | manual | 1d? | 2020-11-15 | 2020-11-15 |  |
| 6 | 1.5 | 启动项目大会 | manual | 1d? | 2020-11-15 | 2020-11-15 |  |
| 7 | 2 | **规划** |  | 24d | 2020-11-12 | 2020-12-15 |  |
| 8 | 2.1 | 规划范围 |  | 1d | 2020-11-12 | 2020-11-12 | 23d |
| 9 | 2.2 | **制定需求说明书** |  | 1d | 2020-11-12 | 2020-11-12 | 0d |
| 10 | 2.2.1 | 界面设计 | manual | 1d | 2020-11-12 | 2020-11-12 |  |
| 11 | 2.2.2 | 详细说明规划书 | manual | 1d | 2020-11-12 | 2020-11-12 |  |
| 12 | 2.2.3 | 项目范围说明书 | manual | 1d | 2020-11-12 | 2020-11-12 |  |
| 13 | 2.2.4 | 创建WBS | manual | 1d | 2020-11-12 | 2020-11-12 |  |
| 14 | 2.3 | **形成范围基准** |  | 1d | 2020-11-12 | 2020-11-12 |  |
| 15 | 2.3.1 | **规划时间** |  | 1d | 2020-11-12 | 2020-11-12 |  |
| 16 | 2.3.1.1 | 排列工作包顺序 | manual | 1d | 2020-11-12 | 2020-11-12 |  |
| 17 | 2.3.1.2 | 估算资源 | manual | 1d | 2020-11-12 | 2020-11-12 |  |
| 18 | 2.3.1.3 | 估算持续时间 | manual | 1d | 2020-11-12 | 2020-11-12 |  |
| 19 | 2.3.1.4 | 制定进度计划 | manual | 1d | 2020-11-12 | 2020-11-12 |  |
| 20 | 2.3.1.5 | 形成进度基准 | manual | 1d | 2020-11-12 | 2020-11-12 |  |
| 21 | 2.3.2 | **规划成本** |  | 1d | 2020-11-12 | 2020-11-12 |  |
| 22 | 2.3.2.1 | 项目成本估算 | manual | 1d | 2020-11-12 | 2020-11-12 |  |
| 23 | 2.3.2.2 | 项目预算 | manual | 1d | 2020-11-12 | 2020-11-12 |  |
| 24 | 2.3.2.3 | 形成范围基准 | manual | 1d | 2020-11-12 | 2020-11-12 |  |

| ID | WBS | Task | Type | Duration | Start | Finish |
| --- | --- | --- | --- | --- | --- | --- |
| 25 | 2.3.3 | **规划质量** |  | 1d | 2020-11-12 | 2020-11-12 |
| 26 | 2.3.3.1 | 制定测试计划 | manual | 1d | 2020-11-12 | 2020-11-12 |
| 27 | 2.3.3.2 | 指定测试用例 | manual | 1d | 2020-11-12 | 2020-11-12 |
| 28 | 2.3.4 | **规划人力资源** |  | 1d | 2020-11-12 | 2020-11-12 |
| 29 | 2.3.4.1 | 制定人力资源计划 | manual | 1d | 2020-11-12 | 2020-11-12 |
| 30 | 2.3.4.2 | 制定人力配备管理计划 | manual | 1d | 2020-11-12 | 2020-11-12 |
| 31 | 2.3.5 | **规划沟通** |  | 1d | 2020-11-12 | 2020-11-12 |
| 32 | 2.3.5.1 | 制定沟通管理计划 | manual | 1d | 2020-11-12 | 2020-11-12 |
| 33 | 2.3.6 | **规划采购** |  | 1d | 2020-11-12 | 2020-11-12 |
| 34 | 2.3.6.1 | 自制外购计划 | manual | 1d | 2020-11-12 | 2020-11-12 |
| 35 | 2.3.6.2 | 制定采购文件 | manual | 1d | 2020-11-12 | 2020-11-12 |
| 36 | 2.3.7 | **规划风险** |  | 1d | 2020-11-12 | 2020-11-12 |
| 37 | 2.3.7.1 | 识别风险 | manual | 1d | 2020-11-12 | 2020-11-12 |
| 38 | 2.3.7.2 | 风险分析 | manual | 1d | 2020-11-12 | 2020-11-12 |
| 39 | 2.3.7.3 | 制定风险登记册 | manual | 1d | 2020-11-12 | 2020-11-12 |
| 40 | 2.3.8 | 规划整合 | manual | 1d | 2020-11-12 | 2020-11-12 |
| 41 | 3 | **执行与监控** |  | 1d | 2020-11-27 | 2020-11-27 |
| 42 | 3.1 | 组建项目团队 | manual | 1d | 2020-11-27 | 2020-11-27 |
| 43 | 3.2 | **项目执行** |  | 22d | 2020-11-10 | 2020-12-10 |
| 44 | 3.2.1 | **首页模块** |  | 1d | 2020-11-10 | 2020-11-11 |
| 45 | 3.2.1.1 | 搜索笔记 | manual | 1d | 2020-11-10 | 2020-11-11 |
| 46 | 3.2.1.2 | 笔记展示 | manual | 1d | 2020-11-10 | 2020-11-11 |
| 47 | 3.2.2 | **用户模块** |  | 1d | 2020-11-10 | 2020-11-11 |
| 48 | 3.2.2.1 | 注册登录 | manual | 1d | 2020-11-10 | 2020-11-11 |
| 49 | 3.2.2.2 | 首页 | manual | 1d | 2020-11-10 | 2020-11-11 |
| 50 | 3.2.2.3 | 收藏夹 | manual | 1d | 2020-11-10 | 2020-11-11 |
| 51 | 3.2.2.4 | 关注 | manual | 1d | 2020-11-10 | 2020-11-11 |
| 52 | 3.2.2.5 | 发布笔记 | manual | 1d | 2020-11-10 | 2020-11-11 |
| 53 | 3.2.2.6 | 发送消息 | manual | 1d | 2020-11-10 | 2020-11-11 |
| 54 | 3.2.2.7 | 个人设置 | manual | 1d | 2020-11-10 | 2020-11-11 |

| ID | WBS | Task | Type | Duration | Start | Finish |
| --- | --- | --- | --- | --- | --- | --- |
| 55 | 3.2.3 | **笔记模块** |  | 1d | 2020-11-10 | 2020-11-11 |
| 56 | 3.2.3.1 | 点赞、评论、收藏笔记 | manual | 1d | 2020-11-10 | 2020-11-11 |
| 57 | 3.2.3.2 | 展示笔记内容 | manual | 1d | 2020-11-10 | 2020-11-11 |
| 58 | 3.2.4 | **发现模块** |  | 1d | 2020-11-10 | 2020-11-11 |
| 59 | 3.2.4.1 | 同城笔记展示 | manual | 1d | 2020-11-10 | 2020-11-11 |
| 60 | 3.2.4.2 | 关注用户笔记展示 | manual | 1d | 2020-11-10 | 2020-11-11 |
| 61 | 3.2.5 | **线上旅游模块** |  | 1d | 2020-11-10 | 2020-11-11 |
| 62 | 3.2.5.1 | 旅游线路简介 | manual | 1d | 2020-11-10 | 2020-11-11 |
| 63 | 3.2.5.2 | 线上旅游打卡 | manual | 1d | 2020-11-10 | 2020-11-11 |
| 64 | 3.3 | **项目监控** |  | 2d | 2020-12-11 | 2020-12-13 |
| 65 | 3.3.1 | 各项指标监控 | manual | 1d | 2020-12-11 | 2020-12-11 |
| 66 | 3.3.2 | 监控评审 | manual | 1d | 2020-12-11 | 2020-12-11 |
| 67 | 3.3.3 | 变更评审 | manual | 1d | 2020-12-11 | 2020-12-11 |
| 68 | 3.3.4 | 例会 | manual | 1d | 2020-12-11 | 2020-12-11 |
| 69 | 3.4 | **管理干系人** |  | 2d | 2020-12-13 | 2020-12-14 |
| 70 | 3.4.1 | 发布项目信息 | manual | 1d | 2020-12-13 | 2020-12-13 |
| 71 | 3.4.2 | 报告监控指标 | manual | 1d | 2020-12-13 | 2020-12-13 |
| 72 | 3.4.3 | 干系人沟通 | manual | 1d | 2020-12-13 | 2020-12-13 |
| 73 | 3.5 | **团队建设** |  | 2d | 2020-12-14 | 2020-12-15 |
| 74 | 3.5.1 | 培训 | manual | 1d | 2020-12-14 | 2020-12-14 |
| 75 | 3.5.2 | 娱乐活动 | manual | 1d | 2020-12-14 | 2020-12-14 |
| 76 | 3.5.3 | 沟通 | manual | 1d | 2020-12-14 | 2020-12-14 |
| 77 | 3.5.4 | 采购 | manual | 1d | 2020-12-14 | 2020-12-14 |
| 78 | 3.5.5 | 项目验收 | manual | 1d | 2020-12-14 | 2020-12-14 |

| ID | WBS | Task | Type | Duration | Start | Finish |
| --- | --- | --- | --- | --- | --- | --- |
| 79 | 3.6 | **收尾** |  | 1d | 2020-12-15 | 2020-12-15 |
| 80 | 3.6.1 | 项目终验 | manual | 1d | 2020-12-15 | 2020-12-15 |
| 81 | 3.6.2 | 结束采购 | manual | 1d | 2020-12-15 | 2020-12-15 |
| 82 | 3.6.3 | 项目内部收尾 | manual | 1d | 2020-12-15 | 2020-12-15 |
